# Карта города

Schedule from MS Project, 2024-03-01 to 2024-08-29, status date 2024-04-29, costs in ₽, A marks actual dates.
Команда разработчиков из 16 человек занимается созданием карты города на основе собственного модуля отображения. Проект должен быть завершен в течение 6 месяцев. Бюджет проекта: 50 000 рублей.

## Calendars

- Стандартный: Mon-Fri 09:00-13:00, 14:00-18:00; Sat-Sun off. Exceptions (off unless hours are given): 2024-03-07 09:00-13:00, 14:00-17:00 (Сокращенный рабочий день перед 8 марта), 2024-03-08 (8 марта (Международный женский день)), 2024-04-27 09:00-13:00, 14:00-18:00 (Рабочий день перед 1 мая), 2024-04-29 to 2024-05-01 (1 мая (Праздник Весны и Труда)), 2024-05-08 09:00-13:00, 14:00-17:00 (Сокращенный рабочий день перед 9 мая), 2024-05-09 to 2024-05-10 (9 мая (День Победы)), 2024-06-11 09:00-13:00, 14:00-17:00 (Сокращенный рабочий день перед 12 июня), 2024-06-12 (12 июня (День России)).

## Resources

| Resource | Group | Rate | Cost per use |
| --- | --- | --- | --- |
| Ведущий программист | Программирование | 10 | 100 |
| Программист №1 | Программирование | 7 | 50 |
| Программист №2 | Программирование | 7 | 50 |
| Программист №3 | Программирование | 7 | 50 |
| программист №4 | Программирование | 7 | 50 |
| Системный аналитик | Анализ | 20 | 300 |
| Художник- дизайнер | Дизайн | 8 | 70 |
| Технический писатель | Документация | 5 | 20 |
| Web-дизайнер | Internet | 7 | 50 |
| 3D аниматор | Дизайн | 8 | 70 |
| Мультимедиа- корреспондент | М-медиа | 3 | 20 |
| Наборщик данных №1 | Ввод данных | 2 | 10 |
| Наборщик данных №2 | Ввод данных | 2 | 10 |
| Наборщик данных №3 | Ввод данных | 2 | 10 |
| Наборщик данных №4 | Ввод данных | 2 | 10 |
| Наборщик данных №5 | Ввод данных | 2 | 10 |
| Аренда сервера |  | 2 |  |

## Schedule

| ID | WBS | Task | Type | Duration | Start | Finish | Predecessors | Complete | Remaining | Baseline start | Baseline finish | Baseline duration | Total slack | Free slack | Constraint | Resources | Work | Actual work | Cost | Baseline cost | Actual cost |
| --- | --- | --- | --- | --- | --- | --- | --- | --- | --- | --- | --- | --- | --- | --- | --- | --- | --- | --- | --- | --- | --- |
| 1 | 1 | Начало проекта | milestone | 0w | 2024-03-01 09:00 A | 2024-03-01 09:00 A |  | 100% |  | 2024-03-01 09:00 | 2024-03-01 09:00 | 0w |  |  |  |  |  |  |  |  |  |
| 2 | 2 | **Создание интерфейса** |  | 85.42d | 2024-03-11 10:00 A | 2024-07-15 16:21 | 1 | 86% | 12.2d | 2024-03-01 09:00 | 2024-06-19 15:26 | 72.31d | 10.35d |  |  |  | 560h | 320h | 5,650 | 5,650 | 3,630 |
| 3 | 2.1 | **Разработка дизайна интерфейса** |  | 30.25d | 2024-03-11 10:00 A | 2024-04-22 12:00 A |  | 100% |  | 2024-03-01 09:00 | 2024-04-08 16:00 | 25.62d |  |  |  |  | 320h | 320h | 2,770 | 2,770 | 2,770 |
| 4 | 2.1.1 | Разработа 2D графических элементов |  | 3w | 2024-03-11 10:00 A | 2024-04-01 13:00 A |  | 100% |  | 2024-03-01 09:00 | 2024-03-25 13:00 | 3w |  |  | start no earlier than 2024-03-11 09:00 | Художник- дизайнер | 120h | 120h | 1,030 | 1,030 | 1,030 |
| 5 | 2.1.2 | Разработка 3D графических элементов |  | 2w | 2024-03-11 10:00 A | 2024-03-25 12:00 A | 4SS | 100% |  | 2024-03-01 09:00 | 2024-03-18 12:00 | 2w |  |  |  | 3D аниматор | 80h | 80h | 710 | 710 | 710 |
| 6 | 2.1.3 | Создание заставки |  | 4w | 2024-03-25 12:00 A | 2024-04-22 12:00 A | 5 | 100% |  | 2024-03-18 12:00 | 2024-04-08 16:00 | 3w |  |  |  | 3D аниматор | 120h | 120h | 1,030 | 1,030 | 1,030 |
| 7 | 2.2 | Программирование интерфейса |  | 1.5w | 2024-07-04 11:21 | 2024-07-15 16:21 | 3, 12 |  |  | 2024-06-07 09:26 | 2024-06-19 15:26 | 1.5w | 10.35d | 0d |  | Программист №3; программист №4; Программист №1; Программист №2 | 240h |  | 1,880 | 1,880 |  |
| 8 | 3 | **Построение базы объектов** |  | 123.16d | 2024-03-01 09:00 A | 2024-08-29 14:15 |  | 24% | 93.51d | 2024-03-25 14:00 | 2024-07-18 13:00 | 77.75d | 0d |  |  | Аренда сервера | 4643.25h | 501.7h | 13,861.15 | 15,148 | 4,325.68 |
| 9 | 3.1 | Анализ и построение структуры базы объектов |  | 2w | 2024-03-01 09:00 A | 2024-03-18 12:00 A |  | 100% |  | 2024-03-25 14:00 | 2024-04-08 16:00 | 2w |  |  |  | Системный аналитик | 80h | 80h | 1,900 | 1,900 | 1,900 |
| 10 | 3.2 | Программирование средств обработки базы объектов |  | 2.45w | 2024-04-12 11:00 A | 2024-06-05 12:15 | 9 | 80% | 0.49w | 2024-04-08 16:00 | 2024-04-18 11:00 | 1.5w | 0d |  |  | Программист №3; программист №4; Программист №1; Программист №2 | 240h | 220.41h | 1,880 | 1,880 | 1,742.84 |
| 11 | 3.3 | Наполнение базы объектов |  | 12w | 2024-06-05 12:15 | 2024-08-29 14:15 | 10 |  |  | 2024-04-18 11:00 | 2024-07-18 13:00 | 12w | 0d |  |  | Наборщик данных №1; Наборщик данных №2; Наборщик данных №3; Наборщик данных №4; Наборщик данных №5 | 2400h |  | 4,850 | 4,850 |  |
| 12 | 4 | **Создание ядра GIS** |  | 82.92d | 2024-03-01 09:00 A | 2024-07-04 11:21 |  | 45% | 45.21d | 2024-03-01 09:00 | 2024-06-07 09:26 | 64.81d | 10.35d | 0d |  |  | 1880h | 506.5h | 18,595.77 | 18,229.33 | 6,939.5 |
| 13 | 4.1 | Анализ и проектирование ядра |  | 5w | 2024-03-01 09:00 A | 2024-04-17 10:30 A |  | 100% |  | 2024-03-01 09:00 | 2024-03-25 13:00 | 3w |  |  |  | Ведущий программист; Системный аналитик | 240h | 240h | 4,050 | 4,000 | 4,050 |
| 14 | 4.2 | Создание модели ядра |  | 2.63w | 2024-04-17 10:30 A | 2024-05-08 11:47 | 13 | 67% | 0.87w | 2024-03-25 14:00 | 2024-04-08 14:49 | 2.02w | 10.35d | 0d |  | Ведущий программист; Программист №1; Программист №2; Программист №3; программист №4 | 400h | 266.5h | 3,415.28 | 3,336.46 | 2,439.5 |
| 15 | 4.3 | Тестирование модели ядра |  | 0.55w | 2024-05-08 11:47 | 2024-05-16 15:47 | 14 |  |  | 2024-04-08 14:49 | 2024-04-19 11:49 | 0.3w | 10.35d | 0d |  | Программист №1; Программист №2; Программист №3; программист №4 | 40h |  | 480 | 480 |  |
| 16 | 4.4 | Создание рабочей версии ядра |  | 6.69w | 2024-05-16 15:47 | 2024-07-04 11:21 | 15 |  |  | 2024-04-19 11:49 | 2024-06-07 09:26 | 6.12w | 10.35d |  |  | Ведущий программист; Программист №1; Программист №2; Программист №3; программист №4 | 1200h |  | 9,650.49 | 9,412.87 |  |
| 17 | 5 | Создание мультимедиа – наполнения |  | 6w | 2024-04-22 12:00 A | 2024-06-10 12:00 | 3 | 18% | 4.9w | 2024-04-08 16:00 | 2024-05-27 16:00 | 6w | 57.03d |  |  | Мультимедиа- корреспондент | 240h | 44h | 740 | 740 | 152 |
| 18 | 6 | Создание справочной системы |  | 2w | 2024-07-25 09:21 | 2024-08-08 09:21 | 7 |  |  | 2024-07-01 09:26 | 2024-07-15 11:26 | 2w | 15.49d |  |  | Технический писатель | 80h |  | 420 | 420 |  |
| 19 | 7 | **Создание руководства пользователя** |  | 17.25d | 2024-07-01 16:21 | 2024-07-25 09:21 | 7FS-10d |  |  | 2024-06-04 14:26 | 2024-07-01 09:26 | 17.38d | 10.35d |  |  |  | 160h |  | 1,010 | 1,010 |  |
| 20 | 7.1 | Разработка дизайна руководства |  | 1w | 2024-07-01 16:21 | 2024-07-08 17:21 |  |  |  | 2024-06-04 14:26 | 2024-06-11 15:26 | 1w | 10.35d | 0d |  | Художник- дизайнер | 40h |  | 390 | 390 |  |
| 21 | 7.2 | Написание руководства пользователя |  | 3w | 2024-07-03 16:21 | 2024-07-25 09:21 | 20SS+2d |  |  | 2024-06-06 14:26 | 2024-07-01 09:26 | 3w | 10.35d | 0d |  | Технический писатель | 120h |  | 620 | 620 |  |
| 22 | 8 | **Создание web – сайта и поддержка** |  | 23.25d | 2024-07-03 16:21 | 2024-08-06 09:21 |  |  |  | 2024-06-06 14:26 | 2024-07-11 12:26 | 23.75d | 10.35d | 0d |  |  | 248h |  | 2,106 | 2,106 |  |
| 23 | 8.1 | Разработка структуры сайта |  | 1d | 2024-07-03 16:21 | 2024-07-04 16:21 | 21SS |  |  | 2024-06-06 14:26 | 2024-06-07 14:26 | 1d | 10.35d | 0d |  | Web-дизайнер | 8h |  | 106 | 106 |  |
| 24 | 8.2 | Разработка дизайна сайта |  | 1.4w | 2024-07-04 16:21 | 2024-07-16 09:21 | 23 |  |  | 2024-06-07 14:26 | 2024-06-20 09:26 | 1.43w | 10.35d | 0d |  | 3D аниматор; Web-дизайнер; Художник- дизайнер | 120h |  | 1,110 | 1,110 |  |
| 25 | 8.3 | Наполнение сайта |  | 3w | 2024-07-16 09:21 | 2024-08-06 09:21 | 24 |  |  | 2024-06-20 09:26 | 2024-07-11 12:26 | 3w | 10.35d |  |  | Web-дизайнер | 120h |  | 890 | 890 |  |
| 26 | 9 | Тестирование сайта |  | 2.43w | 2024-07-30 09:21 | 2024-08-15 10:25 | 22FS-1w |  |  | 2024-07-04 12:26 | 2024-07-22 14:30 | 2.43w | 10.35d | 0d |  | Ведущий программист; Программист №1; Программист №2; Программист №3; программист №4 | 480h |  | 4,041.14 | 3,945.85 |  |
| 27 | 10 | Сдача сайта в эксплуатацию | milestone | 0w | 2024-08-15 10:25 | 2024-08-15 10:25 | 26 |  |  | 2024-07-22 14:30 | 2024-07-22 14:30 | 0w | 10.35d |  |  |  |  |  |  |  |  |

| ID | WBS | Task | Duration | Start | Finish | Complete | Remaining | Baseline start | Baseline finish | Baseline duration | Total slack | Constraint | Resources | Work | Actual work | Cost | Baseline cost | Actual cost |
| --- | --- | --- | --- | --- | --- | --- | --- | --- | --- | --- | --- | --- | --- | --- | --- | --- | --- | --- |
| 28 | 11 | **Совещание** | 92.62d | 2024-03-11 09:00 A | 2024-07-24 17:00 | 40% | 55.58d | 2024-03-06 09:00 | 2024-07-22 18:00 | 92.62d |  |  |  | 133h | 56h | 1,159 | 1,159 | 488 |
| 29 | 11.1 | Совещание 1 | 1h | 2024-03-11 09:00 A | 2024-03-11 10:00 A | 100% |  | 2024-03-06 09:00 | 2024-03-06 10:00 | 1h |  | start no earlier than 2024-03-11 09:00 | 3D аниматор; Web-дизайнер; Ведущий программист; Мультимедиа- корреспондент; Системный аналитик; Технический писатель; Художник- дизайнер | 7h | 7h | 61 | 61 | 61 |
| 30 | 11.2 | Совещание 2 | 1h | 2024-03-15 09:00 A | 2024-03-15 10:00 A | 100% |  | 2024-03-13 09:00 | 2024-03-13 10:00 | 1h |  | start no earlier than 2024-03-15 09:00 | 3D аниматор; Web-дизайнер; Ведущий программист; Мультимедиа- корреспондент; Системный аналитик; Технический писатель; Художник- дизайнер | 7h | 7h | 61 | 61 | 61 |
| 31 | 11.3 | Совещание 3 | 1h | 2024-03-22 09:00 A | 2024-03-22 10:00 A | 100% |  | 2024-03-20 09:00 | 2024-03-20 10:00 | 1h |  | start no earlier than 2024-03-22 09:00 | 3D аниматор; Web-дизайнер; Ведущий программист; Мультимедиа- корреспондент; Системный аналитик; Технический писатель; Художник- дизайнер | 7h | 7h | 61 | 61 | 61 |
| 32 | 11.4 | Совещание 4 | 1h | 2024-03-29 09:00 A | 2024-03-29 10:00 A | 100% |  | 2024-03-27 09:00 | 2024-03-27 10:00 | 1h |  | start no earlier than 2024-03-29 09:00 | 3D аниматор; Web-дизайнер; Ведущий программист; Мультимедиа- корреспондент; Системный аналитик; Технический писатель; Художник- дизайнер | 7h | 7h | 61 | 61 | 61 |
| 33 | 11.5 | Совещание 5 | 1h | 2024-04-05 09:00 A | 2024-04-05 10:00 A | 100% |  | 2024-04-03 09:00 | 2024-04-03 10:00 | 1h |  | start no earlier than 2024-04-05 09:00 | 3D аниматор; Web-дизайнер; Ведущий программист; Мультимедиа- корреспондент; Системный аналитик; Технический писатель; Художник- дизайнер | 7h | 7h | 61 | 61 | 61 |
| 34 | 11.6 | Совещание 6 | 1h | 2024-04-12 09:00 A | 2024-04-12 10:00 A | 100% |  | 2024-04-10 09:00 | 2024-04-10 10:00 | 1h |  | start no earlier than 2024-04-12 09:00 | 3D аниматор; Web-дизайнер; Ведущий программист; Мультимедиа- корреспондент; Системный аналитик; Технический писатель; Художник- дизайнер | 7h | 7h | 61 | 61 | 61 |
| 35 | 11.7 | Совещание 7 | 1h | 2024-04-19 09:00 A | 2024-04-19 10:00 A | 100% |  | 2024-04-17 09:00 | 2024-04-17 10:00 | 1h |  | start no earlier than 2024-04-19 09:00 | 3D аниматор; Web-дизайнер; Ведущий программист; Мультимедиа- корреспондент; Системный аналитик; Технический писатель; Художник- дизайнер | 7h | 7h | 61 | 61 | 61 |
| 36 | 11.8 | Совещание 8 | 1h | 2024-04-26 09:00 A | 2024-04-26 10:00 A | 100% |  | 2024-04-24 09:00 | 2024-04-24 10:00 | 1h |  | start no earlier than 2024-04-26 09:00 | 3D аниматор; Web-дизайнер; Ведущий программист; Мультимедиа- корреспондент; Системный аналитик; Технический писатель; Художник- дизайнер | 7h | 7h | 61 | 61 | 61 |
| 37 | 11.9 | Совещание 9 | 1h | 2024-05-02 09:00 | 2024-05-02 10:00 |  |  | 2024-05-02 09:00 | 2024-05-02 10:00 | 1h | 82.16d | start no earlier than 2024-05-02 09:00 | 3D аниматор; Web-дизайнер; Ведущий программист; Мультимедиа- корреспондент; Системный аналитик; Технический писатель; Художник- дизайнер | 7h |  | 61 | 61 |  |
| 38 | 11.10 | Совещание 10 | 1h | 2024-05-13 09:00 | 2024-05-13 10:00 |  |  | 2024-05-08 09:00 | 2024-05-08 10:00 | 1h | 77.28d | start no earlier than 2024-05-13 09:00 | 3D аниматор; Web-дизайнер; Ведущий программист; Мультимедиа- корреспондент; Системный аналитик; Технический писатель; Художник- дизайнер | 7h |  | 61 | 61 |  |
| 39 | 11.11 | Совещание 11 | 1h | 2024-05-17 09:00 | 2024-05-17 10:00 |  |  | 2024-05-15 09:00 | 2024-05-15 10:00 | 1h | 73.28d | start no earlier than 2024-05-17 09:00 | 3D аниматор; Web-дизайнер; Ведущий программист; Мультимедиа- корреспондент; Системный аналитик; Технический писатель; Художник- дизайнер | 7h |  | 61 | 61 |  |
| 40 | 11.12 | Совещание 12 | 1h | 2024-05-24 09:00 | 2024-05-24 10:00 |  |  | 2024-05-22 09:00 | 2024-05-22 10:00 | 1h | 68.28d | start no earlier than 2024-05-24 09:00 | 3D аниматор; Web-дизайнер; Ведущий программист; Мультимедиа- корреспондент; Системный аналитик; Технический писатель; Художник- дизайнер | 7h |  | 61 | 61 |  |
| 41 | 11.13 | Совещание 13 | 1h | 2024-05-31 09:00 | 2024-05-31 10:00 |  |  | 2024-05-29 09:00 | 2024-05-29 10:00 | 1h | 63.28d | start no earlier than 2024-05-31 09:00 | 3D аниматор; Web-дизайнер; Ведущий программист; Мультимедиа- корреспондент; Системный аналитик; Технический писатель; Художник- дизайнер | 7h |  | 61 | 61 |  |
| 42 | 11.14 | Совещание 14 | 1h | 2024-06-07 09:00 | 2024-06-07 10:00 |  |  | 2024-06-05 09:00 | 2024-06-05 10:00 | 1h | 58.28d | start no earlier than 2024-06-07 09:00 | 3D аниматор; Web-дизайнер; Ведущий программист; Мультимедиа- корреспондент; Системный аналитик; Технический писатель; Художник- дизайнер | 7h |  | 61 | 61 |  |
| 43 | 11.15 | Совещание 15 | 1h | 2024-06-13 09:00 | 2024-06-13 10:00 |  |  | 2024-06-13 09:00 | 2024-06-13 10:00 | 1h | 55.41d | start no earlier than 2024-06-13 09:00 | 3D аниматор; Web-дизайнер; Ведущий программист; Мультимедиа- корреспондент; Системный аналитик; Технический писатель; Художник- дизайнер | 7h |  | 61 | 61 |  |
| 44 | 11.16 | Совещание 16 | 1h | 2024-06-21 09:00 | 2024-06-21 10:00 |  |  | 2024-06-19 09:00 | 2024-06-19 10:00 | 1h | 49.41d | start no earlier than 2024-06-21 09:00 | 3D аниматор; Web-дизайнер; Ведущий программист; Мультимедиа- корреспондент; Системный аналитик; Технический писатель; Художник- дизайнер | 7h |  | 61 | 61 |  |
| 45 | 11.17 | Совещание 17 | 1h | 2024-06-28 09:00 | 2024-06-28 10:00 |  |  | 2024-06-26 09:00 | 2024-06-26 10:00 | 1h | 44.41d | start no earlier than 2024-06-28 09:00 | 3D аниматор; Web-дизайнер; Ведущий программист; Мультимедиа- корреспондент; Системный аналитик; Технический писатель; Художник- дизайнер | 7h |  | 61 | 61 |  |
| 46 | 11.18 | Совещание 18 | 1h | 2024-07-05 09:00 | 2024-07-05 10:00 |  |  | 2024-07-03 09:00 | 2024-07-03 10:00 | 1h | 39.41d | start no earlier than 2024-07-05 09:00 | 3D аниматор; Web-дизайнер; Ведущий программист; Мультимедиа- корреспондент; Системный аналитик; Технический писатель; Художник- дизайнер | 7h |  | 61 | 61 |  |
| 47 | 11.19 | Совещание 19 | 1h | 2024-07-12 09:00 | 2024-07-12 10:00 |  |  | 2024-07-10 09:00 | 2024-07-10 10:00 | 1h | 34.41d | start no earlier than 2024-07-12 09:00 | 3D аниматор; Web-дизайнер; Ведущий программист; Мультимедиа- корреспондент; Системный аналитик; Технический писатель; Художник- дизайнер | 7h |  | 61 | 61 |  |
| 48 | 11.20 | Совещание 20 | 1h | 2024-07-19 09:00 | 2024-07-19 10:00 |  |  | 2024-07-17 09:00 | 2024-07-17 10:00 | 1h | 29.41d | start no earlier than 2024-07-19 09:00 |  |  |  |  |  |  |
